# JIAK KIM PPVC, Singapore

Schedule from MS Project, 2018-06-30 to 2022-03-01, 12 hours a day.
Microsoft

## Calendars

- 6 Days with 12hrs/day (DSPL): Mon-Sat 07:00-12:00, 13:00-19:00; Sun off. Exceptions (off unless hours are given): 2016-01-01 to 2025-01-01 (New Year, recurring), 2016-03-25 to 2025-03-28 (Good Friday, recurring), 2016-05-01 to 2025-05-01 (Labour Day, recurring), 2016-05-21 to 2025-05-21 (Vesak, recurring), 2016-07-06 to 2025-07-06 (Puasa, recurring), 2016-08-09 to 2025-08-09 (National Day, recurring), 2016-09-12 to 2025-09-12 (Haji, recurring), 2016-10-29 to 2025-10-29 (Deepavali, recurring), 2016-12-25 to 2025-12-25 (Christmas, recurring), 2018-02-17 to 2028-02-08 (CNY, recurring).

## Schedule

| ID | WBS | Task | Type | Duration | Start | Finish | Predecessors | Total slack | Free slack | Constraint |
| --- | --- | --- | --- | --- | --- | --- | --- | --- | --- | --- |
| 1 | 1 | **PPVC Condominium PROJECT** |  | 1020.83d | 2018-06-30 | 2022-03-01 |  | 0d |  |  |
| 2 | 1.1 | **Key Dates** |  | 1020.83d | 2018-06-30 | 2022-03-01 |  | 0d |  |  |
| 3 | 1.1.1 | Letter of Award (LOA) | milestone | 0d | 2018-08-01 | 2018-08-01 |  | 0d |  | start no earlier than 2018-08-01 |
| 4 | 1.1.2 | Site Possesion Date | milestone | 0d | 2018-11-01 | 2018-11-01 | 3FS+70d | 1d | 0d | start no earlier than 2018-10-01 |
| 5 | 1.1.3 | Contract Commencement Date | milestone | 0d | 2019-01-02 | 2019-01-02 | 3FS+117d | 0d |  |  |
| 6 | 1.1.4 | Completion of Tower Structure (Blk 1) | milestone | 0d | 2021-06-05 | 2021-06-05 | 103 | 184d |  |  |
| 7 | 1.1.5 | Completion of Tower Structure (Blk 2) | milestone | 0d | 2021-06-29 | 2021-06-29 | 141 | 166d |  |  |
| 8 | 1.1.6 | Substation Hand Over to PG | milestone | 0d | 2021-05-11 | 2021-05-11 | 9SS-75d | 225d | 0d |  |
| 9 | 1.1.7 | Power Turn on | milestone | 0d | 2021-08-18 | 2021-08-18 | 14SS-150d | 150d | 0d |  |
| 10 | 1.1.8 | Water Turn on | milestone | 0d | 2021-11-03 | 2021-11-03 | 14SS-90d | 90d |  |  |
| 11 | 1.1.9 | Pre RI | milestone | 0d | 2021-12-09 | 2021-12-09 | 184SS | 62d |  |  |
| 12 | 1.1.10 | RI Inspection | milestone | 0d | 2021-12-27 | 2021-12-27 | 184FF-12d | 49d |  |  |
| 13 | 1.1.11 | Target TOP Inspection Date | milestone | 0d | 2022-01-12 | 2022-01-12 | 185SS | 37d |  |  |
| 14 | 1.1.12 | TOP | milestone | 0d | 2022-03-01 | 2022-03-01 | 187 | 0d |  |  |
| 15 | 1.1.13 | **AUHTORITY APPROVAL (PP/WP/BP)** |  | 177d | 2018-06-30 | 2019-02-19 |  | 34.83d |  |  |
| 16 | 1.1.13.1 | PP Submission & Approval (by Client) | milestone | 0d | 2018-06-30 | 2018-06-30 |  | 34.83d | 0d | start no earlier than 2018-06-30 |
| 17 | 1.1.13.2 | WP Submission & Approval (by Client) |  | 45d | 2018-11-01 | 2018-12-29 | 16FS+94d | 34.83d | 0d |  |
| 18 | 1.1.13.3 | BP Submission & Approval (by Client) |  | 17d | 2019-01-26 | 2019-02-19 | 17FS+21d | 798.83d |  |  |
| 19 | 1.1.13.4 | PUB DC Clearance on Diversion |  | 72d | 2018-09-01 | 2018-12-04 | 3FS+24d | 789d | 9d |  |
| 20 | 1.1.14 | **Structural Design Submission & Approval** |  | 212d | 2018-12-08 | 2019-09-14 |  | 0d |  |  |
| 21 | 1.1.14.1 | Design Team Mobilization |  | 21d | 2018-12-08 | 2019-01-05 | 5FS-18d | 0d |  |  |
| 22 | 1.1.14.2 | Piling&Foundation (Blk 1) Design |  | 30d | 2019-01-05 | 2019-02-14 | 21 | 0d |  |  |
| 23 | 1.1.14.3 | Piling&Foundation (Blk 1) AC/BCA Approval |  | 35d | 2019-02-14 | 2019-04-01 | 22, 17 | 0d |  |  |
| 24 | 1.1.14.4 | Piling&Foundation (Blk 2) Design |  | 30d | 2019-02-14 | 2019-03-25 | 22 | 232d | 0d |  |
| 25 | 1.1.14.5 | Piling&Foundation (Blk 2) AC/BCA Approval |  | 35d | 2019-03-25 | 2019-05-10 | 24 | 782d |  |  |
| 26 | 1.1.14.6 | ERSS Design |  | 28d | 2019-02-14 | 2019-03-22 | 22 | 90d | 0d |  |
| 27 | 1.1.14.7 | ERSS AC/BCA Approval |  | 25d | 2019-03-22 | 2019-04-24 | 26 | 108d |  |  |
| 28 | 1.1.14.8 | Sub-structure (Blk 1) Design |  | 14d | 2019-03-22 | 2019-04-10 | 26, 22 | 180d | 0d |  |
| 29 | 1.1.14.9 | Sub-structure (Blk 1) AC/BCA Approval |  | 35d | 2019-04-10 | 2019-05-27 | 28 | 180d |  |  |
| 30 | 1.1.14.10 | Sub-structure (Blk 2 & Carpark) Design |  | 14d | 2019-04-10 | 2019-04-27 | 28, 24 | 220d | 0d |  |
| 31 | 1.1.14.11 | Sub-structure (Blk 2 & Carpark) AC/BCA Approval |  | 35d | 2019-04-27 | 2019-06-13 | 30 | 708d |  |  |
| 32 | 1.1.14.12 | L1-L2 Structure (Blk 1) Design |  | 21d | 2019-04-10 | 2019-05-08 | 28 | 207d | 0d |  |
| 33 | 1.1.14.13 | L1-L2 Structure (Blk 1) AC/BCA Approval |  | 35d | 2019-05-08 | 2019-06-22 | 32 | 180d |  |  |
| 34 | 1.1.14.14 | L1-L2 Structure (Blk 2) Design |  | 21d | 2019-05-08 | 2019-06-05 | 32, 30 | 213d | 0d |  |
| 35 | 1.1.14.15 | L1-L2 Structure (Blk 2) AC/BCA Approval |  | 35d | 2019-06-05 | 2019-07-20 | 34 | 680d |  |  |
| 36 | 1.1.14.16 | Superstructure (Blk 1) Design |  | 21d | 2019-05-08 | 2019-06-05 | 32 | 213d | 0d |  |
| 37 | 1.1.14.17 | Superstructure (Blk 1) AC/BCA Approval |  | 35d | 2019-06-05 | 2019-07-20 | 36 | 218d | 216d |  |
| 38 | 1.1.14.18 | Superstructure (Blk 2) Design |  | 21d | 2019-06-05 | 2019-07-02 | 36, 34 | 213d | 0d |  |
| 39 | 1.1.14.19 | Superstructure (Blk 2) AC/BCA Approval |  | 35d | 2019-07-02 | 2019-08-17 | 38 | 213d |  |  |
| 40 | 1.1.14.20 | Roof Design |  | 21d | 2019-07-02 | 2019-07-30 | 38, 36 | 462d | 0d |  |
| 41 | 1.1.14.21 | Roof BCA Approval |  | 35d | 2019-07-30 | 2019-09-14 | 40 | 495d | 456d |  |

| ID | WBS | Task | Type | Duration | Start | Finish | Predecessors | Total slack | Free slack | Text1 |
| --- | --- | --- | --- | --- | --- | --- | --- | --- | --- | --- |
| 42 | 1.1.15 | **PPVC DESIGN MOCK UP** |  | 232d | 2019-01-02 | 2019-11-02 |  | 51d |  |  |
| 43 | 1.1.15.1 | PPVC Design Development |  | 117d | 2019-01-02 | 2019-06-05 | 5 | 10d | 0d |  |
| 44 | 1.1.15.2 | PPVC Finishes Selection |  | 48d | 2019-06-05 | 2019-08-06 | 43 | 10d | 0d |  |
| 45 | 1.1.15.3 | PPVC Mock Up Preparation & Approval |  | 67d | 2019-08-06 | 2019-11-02 | 44 | 51d | 0d |  |
| 46 | 1.1.15.4 | PPVC Mock Up Signed Off | milestone | 0d | 2019-11-02 | 2019-11-02 | 45 | 10d | 0d |  |
| 47 | 1.1.16 | **CONSTRUCTION** |  | 865d | 2018-11-16 | 2021-12-24 |  | 1d |  | SHOF=106k m2 |
| 48 | 1.1.16.1 | Site Preperation and setting up |  | 50d | 2018-11-16 | 2019-01-21 | 4SS+12d | 1d | 0d |  |
| 49 | 1.1.16.2 | Drain Diversion |  | 100d | 2019-01-02 | 2019-05-13 | 5, 48FS-15d, 19FS+12d | 732d |  |  |
| 50 | 1.1.16.3 | **FOUNDATION** |  | 260d | 2019-01-22 | 2019-12-28 |  | 25d |  |  |
| 51 | 1.1.16.3.1 | Pile Test (Including Mobilization) |  | 18d | 2019-01-22 | 2019-02-14 | 23SF, 5FS+12d | 847d |  |  |
| 52 | 1.1.16.3.2 | 1st Excavation For Piling |  | 40d | 2019-02-22 | 2019-04-15 | 48FS+24d | 1d |  |  |
| 53 | 1.1.16.3.3 | Piling Works |  | 132d | 2019-04-01 | 2019-09-21 | 23, 52SS+28d | 0d |  |  |
| 54 | 1.1.16.3.4 | Diaphargm Wall Installation |  | 132d | 2019-04-01 | 2019-09-21 | 53SS | 0d |  |  |
| 55 | 1.1.16.3.5 | Excavation Works |  | 99d | 2019-08-21 | 2019-12-28 | 27, 53FS-24d, 54FS-24d | 0d |  | 66,000m3, 750m3/d+10% |
| 56 | 1.1.16.3.6 | **Struting Tie Beam** |  | 54d | 2019-09-14 | 2019-11-23 |  | 632d |  |  |
| 57 | 1.1.16.3.6.1 | B1 Tie Beam |  | 18d | 2019-09-14 | 2019-10-07 | 55SS+18d | 632d | 0d |  |
| 58 | 1.1.16.3.6.2 | B2 Tie Beam |  | 18d | 2019-10-31 | 2019-11-23 | 57FS+18d | 632d |  |  |
| 59 | 1.1.16.4 | **Basement - L2 Structure** |  | 123d | 2019-12-12 | 2020-05-23 |  | 0d |  |  |
| 60 | 1.1.16.4.1 | Basement 3 |  | 95d | 2019-12-12 | 2020-04-16 | 53, 29, 54, 55FS-12d | 0d |  | 7800m2, 45m2/d+10% |
| 61 | 1.1.16.4.2 | Basement 2 |  | 90d | 2020-01-07 | 2020-05-04 | 60SS+18d | 0d |  | 45m2/d+5% |
| 62 | 1.1.16.4.3 | Basement 1 |  | 81d | 2020-01-29 | 2020-05-15 | 61SS+18d | 0d |  | 50m2/d+5% |
| 63 | 1.1.16.4.4 | Level 1 |  | 62d | 2020-02-14 | 2020-05-06 | 62SS+12d, 33 | 0d |  | 55m2/d+10% |
| 64 | 1.1.16.4.5 | Level 2 - Transfer & High Floor |  | 63d | 2020-03-02 | 2020-05-23 | 63SS+12d | 0d |  |  |
| 65 | 1.1.16.5 | **Super Structure** |  | 325d | 2020-04-29 | 2021-06-29 |  | 18d |  |  |
| 66 | 1.1.16.5.1 | **Blk 1 - 26 Modules per level** |  | 307d | 2020-04-29 | 2021-06-05 |  | 23d |  |  |
| 67 | 1.1.16.5.1.1 | Level 2 (Learning Curve) |  | 18d | 2020-04-29 | 2020-05-23 | 64SS+45d, 37 | 23d | 0d |  |
| 68 | 1.1.16.5.1.2 | Level 3 (Learning Curve) |  | 14d | 2020-05-23 | 2020-06-10 | 67 | 53d | 0d |  |
| 69 | 1.1.16.5.1.3 | Level 4 (Learning Curve) |  | 10d | 2020-06-11 | 2020-06-23 | 68 | 32d | 0d |  |
| 70 | 1.1.16.5.1.4 | Level 5 |  | 7d | 2020-06-23 | 2020-07-02 | 69 | 53d | 0d |  |
| 71 | 1.1.16.5.1.5 | Level 6 |  | 8d | 2020-07-02 | 2020-07-14 | 70 | 53d | 0d | + 2d |
| 72 | 1.1.16.5.1.6 | Level 7 |  | 7d | 2020-07-14 | 2020-07-22 | 71 | 53d | 0d |  |
| 73 | 1.1.16.5.1.7 | Level 8 |  | 8d | 2020-07-22 | 2020-08-01 | 72 | 53d | 0d |  |
| 74 | 1.1.16.5.1.8 | Level 9 |  | 7d | 2020-08-01 | 2020-08-11 | 73 | 32d | 0d |  |
| 75 | 1.1.16.5.1.9 | Level 10 |  | 8d | 2020-08-11 | 2020-08-20 | 74 | 53d | 0d |  |
| 76 | 1.1.16.5.1.10 | Level 11 |  | 7d | 2020-08-21 | 2020-08-29 | 75 | 32d | 0d |  |
| 77 | 1.1.16.5.1.11 | Level 12 |  | 8d | 2020-08-29 | 2020-09-09 | 76 | 32d | 0d | + 2d |
| 78 | 1.1.16.5.1.12 | Level 13 |  | 7d | 2020-09-09 | 2020-09-18 | 77 | 53d | 0d |  |
| 79 | 1.1.16.5.1.13 | Level 14 |  | 8d | 2020-09-19 | 2020-09-29 | 78 | 32d | 0d |  |
| 80 | 1.1.16.5.1.14 | Level 15 |  | 7d | 2020-09-29 | 2020-10-08 | 79 | 53d | 0d |  |
| 81 | 1.1.16.5.1.15 | Level 16 |  | 8d | 2020-10-08 | 2020-10-19 | 80 | 53d | 0d |  |
| 82 | 1.1.16.5.1.16 | Level 17 |  | 7d | 2020-10-19 | 2020-10-27 | 81 | 53d | 0d |  |
| 83 | 1.1.16.5.1.17 | Level 18 |  | 8d | 2020-10-27 | 2020-11-07 | 82 | 53d | 0d | + 2d |
| 84 | 1.1.16.5.1.18 | Level 19 |  | 7d | 2020-11-07 | 2020-11-17 | 83 | 32d | 0d |  |
| 85 | 1.1.16.5.1.19 | Level 20 |  | 8d | 2020-11-17 | 2020-11-26 | 84 | 53d | 0d |  |
| 86 | 1.1.16.5.1.20 | Level 21 |  | 7d | 2020-11-26 | 2020-12-05 | 85 | 53d | 0d |  |
| 87 | 1.1.16.5.1.21 | Level 22 |  | 8d | 2020-12-05 | 2020-12-16 | 86 | 32d | 0d |  |
| 88 | 1.1.16.5.1.22 | Level 23 |  | 7d | 2020-12-16 | 2020-12-24 | 87 | 53d | 0d |  |
| 89 | 1.1.16.5.1.23 | Level 24 |  | 8d | 2020-12-24 | 2021-01-06 | 88 | 53d | 0d |  |
| 90 | 1.1.16.5.1.24 | Level 25 |  | 7d | 2021-01-06 | 2021-01-15 | 89 | 53d | 0d |  |
| 91 | 1.1.16.5.1.25 | Level 26 |  | 8d | 2021-01-15 | 2021-01-25 | 90 | 53d | 0d | + 6d |
| 92 | 1.1.16.5.1.26 | Level 27 |  | 7d | 2021-01-25 | 2021-02-03 | 91 | 53d | 0d |  |
| 93 | 1.1.16.5.1.27 | Level 28 |  | 8d | 2021-02-03 | 2021-02-15 | 92 | 53d | 0d |  |
| 94 | 1.1.16.5.1.28 | Level 29 |  | 7d | 2021-02-15 | 2021-02-23 | 93 | 53d | 0d |  |
| 95 | 1.1.16.5.1.29 | Level 30 |  | 8d | 2021-02-23 | 2021-03-05 | 94 | 53d | 0d | + 2d |
| 96 | 1.1.16.5.1.30 | Level 31 |  | 7d | 2021-03-05 | 2021-03-15 | 95 | 32d | 0d |  |
| 97 | 1.1.16.5.1.31 | Level 32 |  | 8d | 2021-03-15 | 2021-03-24 | 96 | 53d | 0d |  |
| 98 | 1.1.16.5.1.32 | Level 33 |  | 7d | 2021-03-25 | 2021-04-03 | 97 | 32d | 0d |  |
| 99 | 1.1.16.5.1.33 | Level 34 |  | 8d | 2021-04-03 | 2021-04-14 | 98 | 32d | 0d |  |
| 100 | 1.1.16.5.1.34 | Level 35 |  | 7d | 2021-04-14 | 2021-04-22 | 99 | 53d | 0d |  |
| 101 | 1.1.16.5.1.35 | Level 36 |  | 8d | 2021-04-23 | 2021-05-04 | 100 | 32d | 0d | + 6d |
| 102 | 1.1.16.5.1.36 | Lower Roof |  | 15d | 2021-05-04 | 2021-05-25 | 41, 101 | 53d | 0d |  |
| 103 | 1.1.16.5.1.37 | Upper Roof |  | 10d | 2021-05-25 | 2021-06-05 | 102 | 53d | 0d |  |

| ID | WBS | Task | Duration | Start | Finish | Predecessors | Total slack | Free slack | Text1 |
| --- | --- | --- | --- | --- | --- | --- | --- | --- | --- |
| 104 | 1.1.16.5.2 | **Blk 2 - 27 modules per level** | 307d | 2020-05-23 | 2021-06-29 |  | 0d |  |  |
| 105 | 1.1.16.5.2.1 | Level 2 (Learning Curve) | 18d | 2020-05-23 | 2020-06-16 | 64, 39 | 0d |  |  |
| 106 | 1.1.16.5.2.2 | Level 3 (Learning Curve) | 14d | 2020-06-16 | 2020-07-03 | 105 | 0d |  |  |
| 107 | 1.1.16.5.2.3 | Level 4 (Learning Curve) | 10d | 2020-07-03 | 2020-07-17 | 106 | 0d |  |  |
| 108 | 1.1.16.5.2.4 | Level 5 | 7d | 2020-07-17 | 2020-07-27 | 107 | 0d |  |  |
| 109 | 1.1.16.5.2.5 | Level 6 | 8d | 2020-07-27 | 2020-08-05 | 108 | 0d |  | + 2d |
| 110 | 1.1.16.5.2.6 | Level 7 | 7d | 2020-08-05 | 2020-08-14 | 109 | 21d | 0d |  |
| 111 | 1.1.16.5.2.7 | Level 8 | 8d | 2020-08-14 | 2020-08-25 | 110 | 21d | 0d |  |
| 112 | 1.1.16.5.2.8 | Level 9 | 7d | 2020-08-25 | 2020-09-02 | 111 | 21d | 0d |  |
| 113 | 1.1.16.5.2.9 | Level 10 | 8d | 2020-09-02 | 2020-09-14 | 112 | 21d | 0d |  |
| 114 | 1.1.16.5.2.10 | Level 11 | 7d | 2020-09-14 | 2020-09-23 | 113 | 21d | 0d |  |
| 115 | 1.1.16.5.2.11 | Level 12 | 8d | 2020-09-23 | 2020-10-02 | 114 | 21d | 0d | + 2d |
| 116 | 1.1.16.5.2.12 | Level 13 | 7d | 2020-10-03 | 2020-10-12 | 115 | 21d | 0d |  |
| 117 | 1.1.16.5.2.13 | Level 14 | 8d | 2020-10-12 | 2020-10-22 | 116 | 21d | 0d |  |
| 118 | 1.1.16.5.2.14 | Level 15 | 7d | 2020-10-22 | 2020-10-31 | 117 | 21d | 0d |  |
| 119 | 1.1.16.5.2.15 | Level 16 | 8d | 2020-11-02 | 2020-11-11 | 118 | 21d | 0d |  |
| 120 | 1.1.16.5.2.16 | Level 17 | 7d | 2020-11-11 | 2020-11-20 | 119 | 21d | 0d |  |
| 121 | 1.1.16.5.2.17 | Level 18 | 8d | 2020-11-20 | 2020-12-01 | 120 | 21d | 0d | + 2d |
| 122 | 1.1.16.5.2.18 | Level 19 | 7d | 2020-12-01 | 2020-12-09 | 121 | 21d | 0d |  |
| 123 | 1.1.16.5.2.19 | Level 20 | 8d | 2020-12-09 | 2020-12-19 | 122 | 21d | 0d |  |
| 124 | 1.1.16.5.2.20 | Level 21 | 7d | 2020-12-19 | 2020-12-30 | 123 | 21d | 0d |  |
| 125 | 1.1.16.5.2.21 | Level 22 | 8d | 2020-12-30 | 2021-01-09 | 124 | 21d | 0d |  |
| 126 | 1.1.16.5.2.22 | Level 23 | 7d | 2021-01-09 | 2021-01-19 | 125 | 21d | 0d |  |
| 127 | 1.1.16.5.2.23 | Level 24 | 8d | 2021-01-19 | 2021-01-29 | 126 | 21d | 0d |  |
| 128 | 1.1.16.5.2.24 | Level 25 | 7d | 2021-01-29 | 2021-02-06 | 127 | 21d | 0d |  |
| 129 | 1.1.16.5.2.25 | Level 26 | 8d | 2021-02-06 | 2021-02-18 | 128 | 21d | 0d | + 6d |
| 130 | 1.1.16.5.2.26 | Level 27 | 7d | 2021-02-18 | 2021-02-27 | 129 | 21d | 0d |  |
| 131 | 1.1.16.5.2.27 | Level 28 | 8d | 2021-02-27 | 2021-03-09 | 130 | 21d | 0d |  |
| 132 | 1.1.16.5.2.28 | Level 29 | 7d | 2021-03-09 | 2021-03-18 | 131 | 21d | 0d |  |
| 133 | 1.1.16.5.2.29 | Level 30 | 8d | 2021-03-18 | 2021-03-30 | 132 | 21d | 0d | + 2d |
| 134 | 1.1.16.5.2.30 | Level 31 | 7d | 2021-03-30 | 2021-04-07 | 133 | 21d | 0d |  |
| 135 | 1.1.16.5.2.31 | Level 32 | 8d | 2021-04-07 | 2021-04-17 | 134 | 21d | 0d |  |
| 136 | 1.1.16.5.2.32 | Level 33 | 7d | 2021-04-17 | 2021-04-27 | 135 | 21d | 0d |  |
| 137 | 1.1.16.5.2.33 | Level 34 | 8d | 2021-04-27 | 2021-05-07 | 136 | 21d | 0d |  |
| 138 | 1.1.16.5.2.34 | Level 35 | 7d | 2021-05-08 | 2021-05-17 | 137 | 21d | 0d |  |
| 139 | 1.1.16.5.2.35 | Level 36 | 8d | 2021-05-17 | 2021-05-28 | 152FF, 138 | 21d | 0d | + 6d |
| 140 | 1.1.16.5.2.36 | Lower Roof | 15d | 2021-05-28 | 2021-06-16 | 139, 41 | 21d | 0d |  |
| 141 | 1.1.16.5.2.37 | Upper Roof | 10d | 2021-06-16 | 2021-06-29 | 140 | 21d | 0d |  |

| ID | WBS | Task | Duration | Start | Finish | Predecessors | Total slack | Free slack | Text1 |
| --- | --- | --- | --- | --- | --- | --- | --- | --- | --- |
| 142 | 1.1.16.6 | **Service Apartment** | 142d | 2020-05-15 | 2020-11-17 |  | 68d |  |  |
| 143 | 1.1.16.6.1 | Level 1 | 35d | 2020-05-15 | 2020-06-30 | 62 | 68d | 0d | 40m2/d |
| 144 | 1.1.16.6.2 | Level 2 | 30d | 2020-06-30 | 2020-08-08 | 143 | 68d | 0d |  |
| 145 | 1.1.16.6.3 | Level 3 | 16d | 2020-08-08 | 2020-08-28 | 144 | 68d | 0d |  |
| 146 | 1.1.16.6.4 | Level 4 | 16d | 2020-08-28 | 2020-09-18 | 145 | 68d | 0d |  |
| 147 | 1.1.16.6.5 | Attic | 25d | 2020-09-19 | 2020-10-21 | 146 | 47d | 0d |  |
| 148 | 1.1.16.6.6 | Roof | 20d | 2020-10-21 | 2020-11-17 | 147 | 68d | 0d |  |
| 149 | 1.1.16.7 | **PPPVC CONSTRUCTION** | 374d | 2020-01-21 | 2021-05-26 |  | 23d |  |  |
| 150 | 1.1.16.7.1 | Carcass Casting | 335d | 2020-01-21 | 2021-04-03 | 46FS+60d | 10d | 0d |  |
| 151 | 1.1.16.7.2 | Fit-Out Works | 320d | 2020-02-21 | 2021-04-15 | 150SS+24d | 51d | 28d |  |
| 152 | 1.1.16.7.3 | PPVC Installation | 298d | 2020-04-29 | 2021-05-26 | 151SS+24d, 67SS | 2d |  |  |
| 153 | 1.1.16.8 | **Architectural + M&E WORKS:** | 444d | 2020-05-23 | 2021-12-24 |  | 32d | 0d |  |
| 154 | 1.1.16.8.1 | **Blk 1 - Architectural + M&E Works** | 381d | 2020-07-14 | 2021-11-23 |  | 56d |  |  |
| 155 | 1.1.16.8.1.1 | Structural Clearance | 290d | 2020-07-14 | 2021-07-28 | 71 | 56d | 0d |  |
| 156 | 1.1.16.8.1.2 | Wet Trades + M&E 2nd Fix | 340d | 2020-08-13 | 2021-11-02 | 155SS+24d | 38d | 0d | 8d/cycle + 50d |
| 157 | 1.1.16.8.1.3 | Dry Trades + M&E Final Fix | 333d | 2020-09-14 | 2021-11-23 | 156SS+24d | 56d |  |  |
| 158 | 1.1.16.8.2 | **Blk 2 - Architectural + M&E Works** | 375d | 2020-08-21 | 2021-12-24 |  | 0d |  |  |
| 159 | 1.1.16.8.2.1 | Structural Clearance | 290d | 2020-08-21 | 2021-09-06 | 109FS+12d | 0d |  |  |
| 160 | 1.1.16.8.2.2 | Wet Trades + M&E 2nd Fix | 340d | 2020-09-14 | 2021-12-02 | 159SS+18d | 0d |  | 8d/cycle + 50d |
| 161 | 1.1.16.8.2.3 | Dry Trades + M&E Final Fix | 333d | 2020-10-14 | 2021-12-24 | 160SS+24d, 141FF+116d | 0d |  |  |
| 162 | 1.1.16.8.3 | **Service Apartment- Architectural + M&E Works** | 272d | 2020-11-17 | 2021-11-08 |  | 68d |  |  |
| 163 | 1.1.16.8.3.1 | Structural Clearance | 120d | 2020-11-17 | 2021-04-22 | 148 | 68d | 0d |  |
| 164 | 1.1.16.8.3.2 | Wet Trades + M&E 2nd Fix | 180d | 2021-01-04 | 2021-08-27 | 163SS+36d | 68d | 0d |  |
| 165 | 1.1.16.8.3.3 | Dry Trades + M&E Final Fix | 200d | 2021-02-19 | 2021-11-08 | 164SS+36d | 68d |  |  |

| ID | WBS | Task | Type | Duration | Start | Finish | Predecessors | Total slack | Free slack |
| --- | --- | --- | --- | --- | --- | --- | --- | --- | --- |
| 166 | 1.1.16.8.4 | **Podium & Carpark - Architectural + M&E Works** |  | 332d | 2020-05-23 | 2021-07-31 |  | 144d |  |
| 167 | 1.1.16.8.4.1 | Structural Clearance |  | 180d | 2020-05-23 | 2021-01-14 | 64 | 144d | 0d |
| 168 | 1.1.16.8.4.2 | Wet Trades + M&E 2nd Fix |  | 260d | 2020-07-10 | 2021-06-15 | 167SS+36d | 123d | 0d |
| 169 | 1.1.16.8.4.3 | Dry Trades + M&E Final Fix |  | 260d | 2020-08-25 | 2021-07-31 | 168SS+36d | 144d |  |
| 170 | 1.1.16.9 | **External Works+Landscape+Ancillary Building** |  | 336d | 2020-05-15 | 2021-07-29 |  | 164d |  |
| 171 | 1.1.16.9.1 | Substation |  | 125d | 2020-11-26 | 2021-05-11 | 8FF, 63SS+48d | 225d |  |
| 172 | 1.1.16.9.2 | External Works + Landscape |  | 180d | 2020-06-06 | 2021-01-28 | 63FS+24d, 64 | 288d | 0d |
| 173 | 1.1.16.9.3 | Softscape |  | 120d | 2020-09-11 | 2021-02-17 | 172SS+75d | 288d |  |
| 174 | 1.1.16.9.4 | **Conservation Building** |  | 336d | 2020-05-15 | 2021-07-29 |  | 164d |  |
| 175 | 1.1.16.9.4.1 | Structure Strengthening |  | 96d | 2020-05-15 | 2020-09-17 | 62 | 164d | 0d |
| 176 | 1.1.16.9.4.2 | Demolition Works |  | 48d | 2020-09-17 | 2020-11-19 | 175 | 164d | 0d |
| 177 | 1.1.16.9.4.3 | Structural Works |  | 72d | 2020-11-19 | 2021-02-22 | 176 | 164d | 0d |
| 178 | 1.1.16.9.4.4 | Architectural + M&E WORKS: |  | 120d | 2021-02-22 | 2021-07-29 | 177 | 164d |  |
| 179 | 1.1.17 | **INSPECTION & HANDOVER** |  | 248d | 2021-04-10 | 2022-03-01 |  | 0d |  |
| 180 | 1.1.17.1 | CONQUAS |  | 210d | 2021-04-10 | 2022-01-11 | 153FF+12d | 38d |  |
| 181 | 1.1.17.2 | QM |  | 180d | 2021-06-15 | 2022-02-04 | 186FF-18d, 153FF+18d | 18d |  |
| 182 | 1.1.17.3 | Staircase Storey Shelter Inspection |  | 90d | 2021-06-07 | 2021-10-01 | 103 | 32d |  |
| 183 | 1.1.17.4 | T&C |  | 150d | 2021-06-28 | 2022-01-11 | 153FF+12d | 38d |  |
| 184 | 1.1.17.5 | Pre RI & RI |  | 25d | 2021-12-09 | 2022-01-12 | 161FS-12d, 182 | 0d |  |
| 185 | 1.1.17.6 | TOP Inspection |  | 37d | 2022-01-12 | 2022-03-01 | 184 | 0d |  |
| 186 | 1.1.17.7 | TOP Obtention | milestone | 0d | 2022-03-01 | 2022-03-01 | 185, 183 | 0d |  |
| 187 | 1.1.17.8 | Completion of Works | milestone | 0d | 2022-03-01 | 2022-03-01 | 186, 173 | 0d |  |
